How a schedule from MS Project changed from version to version. A marks actual dates.

## Version 1 (saved 2011-10-05)

Note of the change: 管网SCADA系统项目计划

| ID | WBS | Task | Duration | Start | Finish | Predecessors | Total float |
| --- | --- | --- | --- | --- | --- | --- | --- |
| 1 | 1 | **管网SACADA系统** | 2d? | 2011-10-05 | 2011-10-06 |  | 0d |
| 2 |  | 项目前期 | 1d? | 2011-10-05 | 2011-10-05 |  | 1d |
| 3 | 1.2 | **演示系统开发** | 1d? | 2011-10-05 | 2011-10-05 |  | 0d |
| 4 |  | 权限 | 1d? | 2011-10-05 | 2011-10-05 |  | 0d |
| 5 |  | 图表 | 1d? | 2011-10-05 | 2011-10-05 |  | 0d |
| 6 |  | 列表 | 1d? | 2011-10-05 | 2011-10-05 |  | 0d |
| 7 |  | 交付演示系统 | 0d | 2011-10-05 | 2011-10-05 |  | 1d |
| 8 | 1.3 | **正式系统开发** | 1d? | 2011-10-06 | 2011-10-06 | 3 | 0d |
| 9 |  | 系统交付 | 1d? | 2011-10-06 | 2011-10-06 |  | 0d |

## Version 2 (saved 2011-10-05)

Note of the change: Update the Pan priority for the project.

Last finish 2011-10-06 → 2011-10-22 (+16d).

Added:

| ID | Task | Duration | Start | Finish | Predecessors | Constraint | Resources |
| --- | --- | --- | --- | --- | --- | --- | --- |
| 4 | **登录和主页设计** | 3d? | 2011-10-07 | 2011-10-09 |  |  | 刘征占; 杨红康 |
| 5 | 登录页面设计 | 1d? | 2011-10-07 | 2011-10-07 |  | start no earlier than 2011-10-07 | 刘征占 |
| 6 | 主页设计 | 3d | 2011-10-07 | 2011-10-09 |  | start no earlier than 2011-10-07 | 杨红康 |
| 8 | 组织结构管理 | 1d | 2011-10-13 | 2011-10-13 | 36 | start no earlier than 2011-10-13 | 刘征占 |
| 9 | 用户管理 | 1d | 2011-10-14 | 2011-10-14 | 8 | start no earlier than 2011-10-14 | 刘征占 |
| 10 | 角色管理 | 1d | 2011-10-15 | 2011-10-15 | 9 | start no earlier than 2011-10-15 | 刘征占 |
| 11 | 模块管理 | 0.5d | 2011-10-16 | 2011-10-16 | 10 | start no earlier than 2011-10-16 | 刘征占 |
| 12 | 角色授权 | 0.5d? | 2011-10-16 | 2011-10-16 | 11 | start no earlier than 2011-10-16 | 刘征占 |
| 13 | **基础信息** | 12d? | 2011-10-05 | 2011-10-16 |  |  | 郑国江 |
| 14 | 设备信息管理 | 1d? | 2011-10-13 | 2011-10-13 | 37 | start no earlier than 2011-10-13 | 郑国江 |
| 15 | 设备日志管理 | 1d? | 2011-10-14 | 2011-10-14 | 14 | start no earlier than 2011-10-14 | 郑国江 |
| 16 | 系统参数配置 | 1d | 2011-10-15 | 2011-10-15 | 15 | start no earlier than 2011-10-15 | 郑国江 |
| 17 | 维护人员管理 | 1d | 2011-10-16 | 2011-10-16 | 16 | start no earlier than 2011-10-16 | 郑国江 |
| 18 | 数据库备份 | 0d | 2011-10-05 | 2011-10-05 |  |  |  |
| 19 | **设备监控** | 5d? | 2011-10-08 | 2011-10-12 |  |  | 刘征占; 杨红康 |
| 20 | **设备地图信息** | 3d? | 2011-10-10 | 2011-10-12 | 6 |  | 杨红康 |
| 21 | 地图定位 | 1d | 2011-10-10 | 2011-10-10 |  | finish no earlier than 2011-10-10 | 杨红康 |
| 22 | 仪表盘显示 | 1d | 2011-10-11 | 2011-10-11 | 21 | start no earlier than 2011-10-11 | 杨红康 |
| 23 | 悬浮窗体 | 1d? | 2011-10-12 | 2011-10-12 | 22 | start no earlier than 2011-10-12 | 杨红康 |
| 24 | 设备列表信息 | 2d | 2011-10-08 | 2011-10-09 | 5 | start no earlier than 2011-10-08 | 刘征占 |
| 25 | 设备告警信息 | 1d? | 2011-10-10 | 2011-10-10 | 24 | start no earlier than 2011-10-10 | 刘征占 |
| 26 | **设备详细信息** | 7d? | 2011-10-07 | 2011-10-13 |  |  | 杨红康; 郑国江 |
| 27 | 设备信息信息(基本信息) | 0.5d? | 2011-10-13 | 2011-10-13 | 20 | start no earlier than 2011-10-13 | 杨红康 |
| 28 | 设备详细信息(维护人员) | 0.5d? | 2011-10-13 | 2011-10-13 | 27 | start no earlier than 2011-10-13 | 杨红康 |
| 29 | **设备图表** | 3d? | 2011-10-07 | 2011-10-09 |  |  | 郑国江 |
| 30 | 设备曲线图 | 1d | 2011-10-07 | 2011-10-07 |  | start no earlier than 2011-10-07 | 郑国江 |
| 31 | 设备柱状图 | 1d? | 2011-10-08 | 2011-10-08 | 30 | start no earlier than 2011-10-08 | 郑国江 |
| 32 | 设备水银柱 | 1d? | 2011-10-09 | 2011-10-09 | 31 | start no earlier than 2011-10-09 | 郑国江 |
| 33 | **数据分析** | 3d? | 2011-10-10 | 2011-10-12 |  |  | 刘征占; 郑国江 |
| 34 | 设备统计分析 | 1d? | 2011-10-10 | 2011-10-10 | 32 | start no earlier than 2011-10-10 | 郑国江 |
| 35 | **设备对比分析** | 2d? | 2011-10-11 | 2011-10-12 |  |  | 刘征占; 郑国江 |
| 36 | 按时间对比 | 2d? | 2011-10-11 | 2011-10-12 | 25 | finish no earlier than 2011-10-12 | 刘征占 |
| 37 | 按设备对比 | 2d | 2011-10-11 | 2011-10-12 | 34 | start no earlier than 2011-10-11 | 郑国江 |
| 38 | **查询** | 2d? | 2011-10-17 | 2011-10-18 |  |  | 刘征占 |
| 39 | 告警日志查询 | 1d? | 2011-10-17 | 2011-10-17 | 12 | finish no earlier than 2011-10-17 | 刘征占 |
| 40 | 设备信息查询 | 1d? | 2011-10-18 | 2011-10-18 | 39 | start no earlier than 2011-10-18 | 刘征占 |

Removed: 5 图表; 6 列表

Changed:

| ID | Task | Start | Finish | Duration | Total float | Predecessors | Other |
| --- | --- | --- | --- | --- | --- | --- | --- |
| 1 | **管网SACADA系统** | 2011-10-05 → 2011-10-04 (-1d) | 2011-10-06 → 2011-10-22 (+16d) | 2d? → 17.5d? |  |  |  |
| 2 | 项目前期 | 2011-10-05 → 2011-10-04 (-1d) | 2011-10-05 → 2011-10-06 (+1d) | 1d? → 2.5d | 1d → 15d |  | constraint none → finish no earlier than 2011-10-06; resources 刘征战 → 刘征占; 杨红康 |
| 3 | **演示系统开发** |  | 2011-10-05 → 2011-10-22 (+17d) | 1d? → 17d? |  |  |  |
| 7 | **权限部分** | 2011-10-05 → 2011-10-13 (+8d) | 2011-10-05 → 2011-10-16 (+11d) | 1d? → 4d? | 0d → 3d |  | was named 权限; resources 杨红康 → 刘征占 |
| 41 | 交付演示系统 | 2011-10-05 → 2011-10-22 (+17d) | 2011-10-05 → 2011-10-22 (+17d) |  | 1d → 0d |  | constraint none → start no earlier than 2011-10-22 |
| 46 | **正式系统开发** | 2011-10-06 → 2011-10-05 (-1d) | 2011-10-06 → 2011-10-05 (-1d) |  | 0d → 16d | 3 → none |  |
| 47 | 系统交付 | 2011-10-06 → 2011-10-05 (-1d) | 2011-10-06 → 2011-10-05 (-1d) |  | 0d → 16d |  |  |
